# E-Clothify

Schedule from MS Project, 2025-09-11 to 2025-11-20, costs in €.

## Calendars

- Calendario-Sevilla: Mon-Fri 09:00-13:00, 15:00-19:00; Sat-Sun off. Exceptions (off unless hours are given): 2025-10-12 to 2025-10-13 (Fiesta Nacional de España), 2025-11-01 (Todos los Santos).

## Resources

| Resource | Rate | Cost per use |
| --- | --- | --- |
| Jefe de Proyecto | 28 |  |
| Desarrollador full stack | 24 |  |
| Director de operaciones | 22 |  |
| Ingeniero DevOps | 23 |  |
| Licencias de software |  | 260 |
| Alquiler de oficinas |  |  |
| Servicios de diseño gráfico |  |  |
| Auditorías de seguridad |  |  |
| Costes de la Organización |  |  |
| Reservas de Contingencia |  |  |
| Reservas de Gestión |  |  |

## Schedule

| ID | WBS | Task | Type | Duration | Start | Finish | Predecessors | Baseline start | Baseline finish | Baseline duration | Total slack | Resources | Work | Cost |
| --- | --- | --- | --- | --- | --- | --- | --- | --- | --- | --- | --- | --- | --- | --- |
| 1 | 1 | **Proyecto** |  | 50d? | 2025-09-11 | 2025-11-20 |  | 2025-10-08 | 2025-10-08 | 1d? | 0d |  | 352h | 8,932 |
| 2 | 1.1 | **Inicio y planificación** |  | 16d? | 2025-09-11 | 2025-10-02 |  |  |  |  | 0d |  | 88h | 2,284 |
| 3 | 1.1.1 | **Acta de constitución y alcance** |  | 6d | 2025-09-11 | 2025-09-18 |  |  |  |  |  |  | 16h | 424 |
| 4 | 1.1.1.1 | Redactar el Acta de Constitución | manual | 1d | 2025-09-12 | 2025-09-12 |  |  |  |  |  | Jefe de Proyecto | 8h | 224 |
| 5 | 1.1.1.2 | Revisar y aprobar el Acta | manual | 1d | 2025-09-15 | 2025-09-15 | 4 |  |  |  |  | Jefe de Proyecto [50%]; Director de operaciones [50%] | 8h | 200 |
| 6 | 1.1.1.3 | Fin H1 - Acta aprobada por patrocinador | manual | 4d | 2025-09-15 | 2025-09-18 |  |  |  |  |  |  |  |  |
| 7 | 1.1.2 | **Plan de dirección del proyecto** |  | 6d? | 2025-09-18 | 2025-09-25 | 6 |  |  |  |  |  | 16h | 424 |
| 8 | 1.1.2.1 | Elaborar el Plan de Dirección | manual | 1d | 2025-09-18 | 2025-09-18 |  |  |  |  |  | Jefe de Proyecto | 8h | 224 |
| 9 | 1.1.2.2 | Aprobar el Plan de Dirección | manual | 1d | 2025-09-22 | 2025-09-22 | 8 |  |  |  |  | Jefe de Proyecto [50%]; Director de operaciones [50%] | 8h | 200 |
| 10 | 1.1.2.3 | Fin H2 - Plan de dirección aprobado | manual | 4d | 2025-09-22 | 2025-09-25 |  |  |  |  |  |  |  |  |
| 11 | 1.1.3 | **Planes de gestión (alcance, requisitos, comunicaciones)** |  | 6d? | 2025-09-25 | 2025-10-02 | 10 |  |  |  |  |  | 32h | 872 |
| 12 | 1.1.3.1 | Definir el Plan de Gestión de Alcance | manual | 1d | 2025-09-25 | 2025-09-25 |  |  |  |  |  | Jefe de Proyecto | 8h | 224 |
| 13 | 1.1.3.2 | Definir el Plan de Gestión de Requisitos | manual | 1d | 2025-09-26 | 2025-09-26 |  |  |  |  |  | Jefe de Proyecto | 8h | 224 |
| 14 | 1.1.3.3 | Definir el Plan de Gestión de Comunicaciones | manual | 1d | 2025-09-29 | 2025-09-29 |  |  |  |  |  | Jefe de Proyecto | 8h | 224 |
| 15 | 1.1.3.4 | Revisar y aprobar los planes | manual | 1d | 2025-09-30 | 2025-09-30 | 12, 13, 14 |  |  |  |  | Jefe de Proyecto [50%]; Director de operaciones [50%] | 8h | 200 |
| 16 | 1.1.3.5 | Fin H3 - Planes de gestión aprobados | manual | 1d | 2025-09-25 | 2025-09-25 |  |  |  |  |  |  |  |  |
| 17 | 1.1.4 | **Definición de arquitectura y entorno técnico** |  | 6d? | 2025-09-25 | 2025-10-02 |  |  |  |  |  |  | 24h | 564 |
| 18 | 1.1.4.1 | Analizar arquitectura y componentes principales | manual | 1d | 2025-10-01 | 2025-10-01 |  |  |  |  |  | Ingeniero DevOps | 8h | 184 |
| 19 | 1.1.4.2 | Configurar entorno Django y repositorio CI/CD | manual | 1d | 2025-10-01 | 2025-10-01 |  |  |  |  |  | Desarrollador full stack | 8h | 192 |
| 20 | 1.1.4.3 | Validar configuración y despliegue de entorno | manual | 1d | 2025-10-01 | 2025-10-01 |  |  |  |  |  | Desarrollador full stack [50%]; Ingeniero DevOps [50%] | 8h | 188 |
| 21 | 1.1.4.4 | Fin H4 – Entorno técnico validado | milestone, manual | 0d | 2025-09-25 | 2025-09-25 |  |  |  |  |  |  |  |  |
| 22 | 1.2 | **Diseño y desarrollo funcional** |  | 20d? | 2025-10-02 | 2025-10-30 |  |  |  |  | 0d |  | 160h | 3,760 |
| 23 | 1.2.1 | **Catálogo de productos y fichas** |  | 6d? | 2025-10-02 | 2025-10-09 |  |  |  |  |  |  | 40h | 940 |
| 24 | 1.2.1.1 | Diseñar estructura de catálogo y categorías (RQ3, RQ11) | manual | 2d | 2025-10-02 | 2025-10-03 |  |  |  |  |  | Desarrollador full stack [50%]; Ingeniero DevOps [50%] | 16h | 376 |
| 25 | 1.2.1.2 | Implementar fichas de producto con atributos (RQ9, RQ10) | manual | 1d | 2025-10-06 | 2025-10-06 |  |  |  |  |  | Desarrollador full stack [50%]; Ingeniero DevOps [50%] | 8h | 188 |
| 26 | 1.2.1.3 | Configurar buscador y filtrado (RQ12) | manual | 1d | 2025-10-07 | 2025-10-07 |  |  |  |  |  | Desarrollador full stack [50%]; Ingeniero DevOps [50%] | 8h | 188 |
| 27 | 1.2.1.4 | Publicar catálogo y realizar pruebas funcionales (RQ13) | manual | 1d | 2025-10-08 | 2025-10-08 |  |  |  |  |  | Desarrollador full stack [50%]; Ingeniero DevOps [50%] | 8h | 188 |
| 28 | 1.2.1.5 | Fin H5 – Catálogo validado y publicado | milestone, manual | 0d | 2025-10-02 | 2025-10-02 |  |  |  |  |  |  |  |  |

| ID | WBS | Task | Type | Duration | Start | Finish | Total slack | Resources | Work | Cost |
| --- | --- | --- | --- | --- | --- | --- | --- | --- | --- | --- |
| 29 | 1.2.2 | **Carrito de compra y checkout** |  | 5d? | 2025-10-09 | 2025-10-16 |  |  | 40h | 940 |
| 30 | 1.2.2.1 | Implementar carrito siempre visible (RQ1) | manual | 1d | 2025-10-09 | 2025-10-09 |  | Desarrollador full stack [50%]; Ingeniero DevOps [50%] | 8h | 188 |
| 31 | 1.2.2.2 | Permitir modificación de cantidades (RQ2) | manual | 1d | 2025-10-10 | 2025-10-10 |  | Desarrollador full stack [50%]; Ingeniero DevOps [50%] | 8h | 188 |
| 32 | 1.2.2.3 | Implementar flujo de compra rápida ≤ 3 pasos (RQ4) | manual | 1d | 2025-10-13 | 2025-10-13 |  | Desarrollador full stack [50%]; Ingeniero DevOps [50%] | 8h | 188 |
| 33 | 1.2.2.4 | Conectar carrito con checkout (RQ14) | manual | 1d | 2025-10-14 | 2025-10-14 |  | Desarrollador full stack [50%]; Ingeniero DevOps [50%] | 8h | 188 |
| 34 | 1.2.2.5 | Capturar datos del cliente y envío (RQ15) | manual | 1d | 2025-10-15 | 2025-10-15 |  | Desarrollador full stack [50%]; Ingeniero DevOps [50%] | 8h | 188 |
| 35 | 1.2.2.6 | Fin H6 – Flujo de compra validado | milestone, manual | 0d | 2025-10-09 | 2025-10-09 |  |  |  |  |
| 36 | 1.2.3 | **Métodos de pago e integración de pasarela** |  | 6d | 2025-10-16 | 2025-10-23 |  |  | 40h | 940 |
| 37 | 1.2.3.1 | Integrar pasarela de pago con SSL (RQ5) | manual | 2d | 2025-10-16 | 2025-10-17 |  | Desarrollador full stack [50%]; Ingeniero DevOps [50%] | 16h | 376 |
| 38 | 1.2.3.2 | Validar seguridad HTTPS y cifrado | manual | 1d | 2025-10-20 | 2025-10-20 |  | Desarrollador full stack [50%]; Ingeniero DevOps [50%] | 8h | 188 |
| 39 | 1.2.3.3 | Configurar opciones de pago (tarjeta, transferencia, etc.) | manual | 1d | 2025-10-21 | 2025-10-21 |  | Desarrollador full stack [50%]; Ingeniero DevOps [50%] | 8h | 188 |
| 40 | 1.2.3.4 | Prueba completa del flujo de pago | manual | 1d | 2025-10-22 | 2025-10-22 |  | Desarrollador full stack [50%]; Ingeniero DevOps [50%] | 8h | 188 |
| 41 | 1.2.3.5 | Fin H7 – Pago y pasarela integrados | milestone, manual | 0d | 2025-10-16 | 2025-10-16 |  |  |  |  |
| 42 | 1.2.4 | **Gestión de pedidos** |  | 6d? | 2025-10-23 | 2025-10-30 |  |  | 40h | 940 |
| 43 | 1.2.4.1 | Implementar panel de gestión de pedidos (RQ8) | manual | 2d | 2025-10-23 | 2025-10-24 |  | Desarrollador full stack [50%]; Ingeniero DevOps [50%] | 16h | 376 |
| 44 | 1.2.4.2 | Permitir seguimiento con número de pedido (RQ8) | manual | 1d | 2025-10-27 | 2025-10-27 |  | Desarrollador full stack [50%]; Ingeniero DevOps [50%] | 8h | 188 |
| 45 | 1.2.4.3 | Validar correos automáticos de confirmación (RQ16) | manual | 1d | 2025-10-28 | 2025-10-28 |  | Desarrollador full stack [50%]; Ingeniero DevOps [50%] | 8h | 188 |
| 46 | 1.2.4.4 | Revisar roles y accesos del administrador | manual | 1d | 2025-10-29 | 2025-10-29 |  | Desarrollador full stack [50%]; Ingeniero DevOps [50%] | 8h | 188 |
| 47 | 1.2.4.5 | Fin H8 – Gestión de pedidos validada | milestone, manual | 0d | 2025-10-23 | 2025-10-23 |  |  |  |  |
| 48 | 1.3 | **Integración, pruebas y despliegue** |  | 16d? | 2025-10-30 | 2025-11-20 | 0d |  | 72h | 2,016 |
| 49 | 1.3.1 | **Integración de componentes** |  | 6d? | 2025-10-30 | 2025-11-06 |  |  | 12h | 336 |
| 50 | 1.3.1.1 | Integrar módulos principales (catálogo, carrito, pedidos, pago) | manual | 1d | 2025-10-30 | 2025-10-30 |  | Jefe de Proyecto [50%] | 4h | 112 |
| 51 | 1.3.1.2 | Validar funcionamiento conjunto | manual | 1d | 2025-10-31 | 2025-10-31 |  | Jefe de Proyecto [50%] | 4h | 112 |
| 52 | 1.3.1.3 | Resolver conflictos o dependencias entre componentes | manual | 1d | 2025-11-03 | 2025-11-03 |  | Jefe de Proyecto [50%] | 4h | 112 |
| 53 | 1.3.1.4 | Fin H9 – Integración completa | milestone, manual | 0d | 2025-10-30 | 2025-10-30 |  |  |  |  |

| ID | WBS | Task | Type | Duration | Start | Finish | Resources | Work | Cost |
| --- | --- | --- | --- | --- | --- | --- | --- | --- | --- |
| 54 | 1.3.2 | **Pruebas funcionales y de aceptación** |  | 6d? | 2025-10-30 | 2025-11-06 |  | 12h | 336 |
| 55 | 1.3.2.1 | Elaborar plan de pruebas funcionales (UAT) | manual | 1d | 2025-10-30 | 2025-10-30 | Jefe de Proyecto [50%] | 4h | 112 |
| 56 | 1.3.2.2 | Ejecutar pruebas con usuarios y recoger incidencias | manual | 1d | 2025-10-31 | 2025-10-31 | Jefe de Proyecto [50%] | 4h | 112 |
| 57 | 1.3.2.3 | Corregir defectos y validar criterios de aceptación | manual | 1d | 2025-11-03 | 2025-11-03 | Jefe de Proyecto [50%] | 4h | 112 |
| 58 | 1.3.2.4 | Fin H10 – Pruebas validadas por cliente | milestone, manual | 0d | 2025-10-30 | 2025-10-30 |  |  |  |
| 59 | 1.3.3 | **Despliegue en entorno PaaS** |  | 6d? | 2025-11-06 | 2025-11-13 |  | 24h | 672 |
| 60 | 1.3.3.1 | Preparar entorno demo y productivo | manual | 1d | 2025-11-06 | 2025-11-06 | Jefe de Proyecto | 8h | 224 |
| 61 | 1.3.3.2 | Desplegar versión estable en PaaS (RQ19) | manual | 1d | 2025-11-07 | 2025-11-07 | Jefe de Proyecto | 8h | 224 |
| 62 | 1.3.3.3 | Validar acceso y rendimiento del entorno | manual | 1d | 2025-11-10 | 2025-11-10 | Jefe de Proyecto | 8h | 224 |
| 63 | 1.3.3.4 | Fin H11 – Despliegue final en PaaS | milestone, manual | 0d | 2025-11-06 | 2025-11-06 |  |  |  |
| 64 | 1.3.4 | **Documentación técnica y manuales** |  | 6d? | 2025-11-13 | 2025-11-20 |  | 24h | 672 |
| 65 | 1.3.4.1 | Redactar manual de usuario | manual | 1d | 2025-11-13 | 2025-11-13 | Jefe de Proyecto | 8h | 224 |
| 66 | 1.3.4.2 | Redactar documentación técnica (instalación, mantenimiento) | manual | 1d | 2025-11-14 | 2025-11-14 | Jefe de Proyecto | 8h | 224 |
| 67 | 1.3.4.3 | Validar documentación con el cliente (RQ20) | manual | 1d | 2025-11-17 | 2025-11-17 | Jefe de Proyecto | 8h | 224 |
| 68 | 1.3.4.4 | Fin H12 – Documentación aprobada | milestone, manual | 0d | 2025-11-13 | 2025-11-13 |  |  |  |
| 69 | 1.4 | **Cierre** |  | 6d? | 2025-11-13 | 2025-11-20 |  | 32h | 872 |
| 70 | 1.4.1 | **Cierre del proyecto y lecciones aprendidas** |  | 6d? | 2025-11-13 | 2025-11-20 |  | 32h | 872 |
| 71 | 1.4.1.1 | Reunión de cierre del proyecto | manual | 1d | 2025-11-13 | 2025-11-13 | Jefe de Proyecto | 8h | 224 |
| 72 | 1.4.1.2 | Recopilar lecciones aprendidas | manual | 1d | 2025-11-14 | 2025-11-14 | Jefe de Proyecto | 8h | 224 |
| 73 | 1.4.1.3 | Actualizar repositorio final del proyecto | manual | 1d | 2025-11-17 | 2025-11-17 | Jefe de Proyecto | 8h | 224 |
| 74 | 1.4.1.4 | Entregar documentación final firmada | manual | 1d | 2025-11-18 | 2025-11-18 | Director de operaciones [50%]; Jefe de Proyecto [50%] | 8h | 200 |
| 75 | 1.4.1.5 | Fin H13 - Cierre del proyecto completado | milestone, manual | 0d | 2025-11-13 | 2025-11-13 |  |  |  |
